Phase,Task,Planned Start,Planned Finish,Actual Start,Actual Finish,% Complete
Design,Site survey,2026-06-01,2026-06-12,2026-06-01,2026-06-15,1
Design,Specifications,2026-06-15,2026-07-10,2026-06-18,2026-07-17,1
Procurement,Bid & award,2026-07-13,2026-08-14,2026-07-20,2026-08-28,1
Procurement,Submittal review,2026-08-17,2026-09-04,2026-08-31,2026-09-18,1
Construction,Equipment lead time,2026-09-07,2026-11-27,2026-09-21,2026-12-11,0.6
Construction,Car 1 install,2026-11-30,2027-01-22,,,0
Construction,Car 2 install,2027-01-25,2027-03-19,,,0
Closeout,Acceptance testing,2027-03-22,2027-04-02,,,0
